# DPM Gantt Chart

Schedule from GanttProject, 2017-10-15 to 2017-12-01.
This is the DPM Final Project Gantt Chart for Team 06.

## Calendars

- Project calendar: Mon-Sun working.

## Resources

| Resource | Group |
| --- | --- |
| Alex Hale | Documentation Manager |
| Justin Tremblay | Software Lead Designer |
| Frederic Cyr | Hardware Lead Designer |
| Xu Hai | Testing Manager |
| Xianyi Zhan | Team Member (Hardware) |
| Josh Inscoe | Team Manager |

## Schedule

| ID | WBS | Task | Type | Duration | Start | Finish | Predecessors | Complete | Constraint | Resources |
| --- | --- | --- | --- | --- | --- | --- | --- | --- | --- | --- |
| 1 | 1 | Project Kick off |  | 1d | 2017-10-15 | 2017-10-15 |  | 100% |  |  |
| 2 | 2 | Initial versions of 4 main docs |  | 1d | 2017-10-16 | 2017-10-16 | 1 | 100% |  | Alex Hale; Justin Tremblay [50%]; Frederic Cyr [50%]; Xu Hai; Xianyi Zhan; Josh Inscoe |
| 3 | 3 | Preliminary design ideas |  | 1d | 2017-10-16 | 2017-10-16 | 1 | 100% |  | Justin Tremblay [50%]; Frederic Cyr [50%] |
| 4 | 4 | **Mechanical Design Proposal** |  | 5d | 2017-10-17 | 2017-10-21 | 35 | 100% |  | Frederic Cyr [50%]; Xu Hai [30%]; Xianyi Zhan [50%] |
| 5 | 4.1 | Mechanical Component Design |  | 1d | 2017-10-17 | 2017-10-17 |  | 100% |  | Frederic Cyr [70%]; Xu Hai [10%]; Xianyi Zhan [70%] |
| 6 | 4.2 | Mechanical Component Integration |  | 1d | 2017-10-18 | 2017-10-18 | 5 | 100% |  | Frederic Cyr [50%]; Xu Hai [50%]; Xianyi Zhan [50%] |
| 7 | 4.3 | Mechanical Testing and Adjustments |  | 3d | 2017-10-19 | 2017-10-21 | 6 | 100% |  | Frederic Cyr [50%]; Xu Hai; Xianyi Zhan [50%] |
| 8 | 5 | **Documentation, budget updates** |  | 1d | 2017-10-17 | 2017-10-17 | 35 | 100% |  |  |
| 9 | 5.1 | HW Design Document |  | 1d | 2017-10-17 | 2017-10-17 |  | 100% |  | Alex Hale [33.3%]; Frederic Cyr [30%]; Xu Hai [10%]; Xianyi Zhan [30%] |
| 10 | 5.2 | SW Design Document |  | 1d | 2017-10-17 | 2017-10-17 |  | 100% |  | Alex Hale [33.3%]; Justin Tremblay; Josh Inscoe [10%] |
| 11 | 5.3 | Testing Document |  | 1d | 2017-10-17 | 2017-10-17 |  | 100% |  | Alex Hale [33.3%]; Xu Hai [50%] |
| 12 | 5.4 | Adjust Budget and GANTT Chart |  | 1d | 2017-10-17 | 2017-10-17 |  | 100% |  | Josh Inscoe |
| 13 | 6 | Second Design Meeting | milestone | 0d | 2017-10-24 | 2017-10-24 | 8 |  | start no earlier than 2017-10-24 |  |
| 14 | 7 | Choose Mechanical Design |  | 1d | 2017-10-24 | 2017-10-24 | 13 | 100% |  | Frederic Cyr; Xu Hai; Xianyi Zhan |
| 15 | 8 | Construct physical model and/or LDD |  | 2d | 2017-10-25 | 2017-10-26 | 14 | 100% |  | Frederic Cyr; Xu Hai; Xianyi Zhan |
| 16 | 9 | Software class hierarchy |  | 3d | 2017-10-24 | 2017-10-26 | 13 | 100% |  | Alex Hale; Justin Tremblay; Josh Inscoe |
| 17 | 10 | Preliminary API docs |  | 2d | 2017-10-27 | 2017-10-28 | 16 | 98% |  | Alex Hale; Justin Tremblay; Josh Inscoe |
| 18 | 11 | Third Design Meeting | milestone | 0d | 2017-10-31 | 2017-10-31 | 4, 14, 15, 17, 30 |  | start no earlier than 2017-10-31 |  |
| 19 | 12 | Complete Mechanical Design |  | 3d | 2017-10-31 | 2017-11-02 | 18 |  |  | Frederic Cyr; Xu Hai [20%]; Xianyi Zhan |
| 20 | 13 | Final Mechanical Design | milestone | 0d | 2017-11-03 | 2017-11-03 | 19 |  |  |  |
| 21 | 14 | Complete testing of mechanical design |  | 2d | 2017-11-03 | 2017-11-04 | 20, 28 |  |  | Frederic Cyr [67%]; Xu Hai; Xianyi Zhan [67%] |
| 22 | 15 | Completion of software for beta demo |  | 2d | 2017-11-02 | 2017-11-03 | 24 |  |  | Alex Hale [50%]; Justin Tremblay [50%]; Josh Inscoe [50%] |
| 23 | 16 | Initial test of mech and soft for beta |  | 2d | 2017-11-05 | 2017-11-06 | 21, 22 |  |  | Alex Hale; Justin Tremblay; Frederic Cyr; Xu Hai; Xianyi Zhan; Josh Inscoe |
| 24 | 17 | **Software development phase 1** |  | 4d | 2017-10-29 | 2017-11-01 | 16 |  |  |  |
| 25 | 17.1 | Update State Machines |  | 2d | 2017-10-29 | 2017-10-30 |  |  |  | Alex Hale; Justin Tremblay; Josh Inscoe |
| 26 | 17.2 | Improve Reliability of Zipline System |  | 2d | 2017-10-31 | 2017-11-01 | 25 |  |  | Alex Hale [50%]; Justin Tremblay [50%]; Josh Inscoe [50%] |
| 27 | 17.3 | Implement Searching System |  | 2d | 2017-10-31 | 2017-11-01 | 25 |  |  | Alex Hale [50%]; Justin Tremblay [50%]; Josh Inscoe [50%] |
| 28 | 18 | Testing Plan development |  | 3d | 2017-10-31 | 2017-11-02 | 18 |  |  | Xu Hai [80%] |
| 29 | 19 | Beta demo preparation |  | 1d | 2017-11-03 | 2017-11-03 | 19, 24 |  |  | Alex Hale; Justin Tremblay; Frederic Cyr [33%]; Xu Hai [20%]; Xianyi Zhan [33%]; Josh Inscoe |

| ID | WBS | Task | Type | Duration | Start | Finish | Predecessors | Complete | Constraint | Resources |
| --- | --- | --- | --- | --- | --- | --- | --- | --- | --- | --- |
| 30 | 20 | **Software Architecture** |  | 7d | 2017-10-17 | 2017-10-23 | 35 | 99% |  |  |
| 31 | 20.1 | Design Main System State Machine |  | 2d | 2017-10-17 | 2017-10-18 |  | 100% |  | Alex Hale [50%]; Justin Tremblay [50%]; Josh Inscoe [50%] |
| 32 | 20.2 | Design Subsystem State Machines |  | 3d | 2017-10-19 | 2017-10-21 | 31 | 100% |  | Alex Hale; Justin Tremblay; Josh Inscoe |
| 33 | 20.3 | Resolve Dependencies |  | 2d | 2017-10-22 | 2017-10-23 | 32 | 98% |  | Alex Hale [50%]; Justin Tremblay [50%]; Josh Inscoe [50%] |
| 34 | 20.4 | Outline Individual Class Functionality |  | 2d | 2017-10-22 | 2017-10-23 | 32 | 98% |  | Alex Hale [50%]; Justin Tremblay [50%]; Josh Inscoe [50%] |
| 35 | 21 | First Design Meeting | milestone | 0d | 2017-10-17 | 2017-10-17 | 2, 3 |  | start no earlier than 2017-10-17 |  |
| 36 | 22 | Full testing for beta demo |  | 3d | 2017-11-07 | 2017-11-09 | 23 |  |  | Alex Hale; Justin Tremblay; Frederic Cyr; Xu Hai; Xianyi Zhan; Josh Inscoe |
| 37 | 23 | Beta Demo Milestone | milestone | 0d | 2017-11-14 | 2017-11-14 | 29, 36 |  | start no earlier than 2017-11-14 |  |
| 38 | 24 | **revisions and testing from beta** |  | 6d | 2017-11-14 | 2017-11-19 | 37 |  |  |  |
| 39 | 24.1 | Make Any Necessary Improvements |  | 3d | 2017-11-14 | 2017-11-16 |  |  |  | Alex Hale [33%]; Justin Tremblay [33%]; Josh Inscoe [33%] |
| 40 | 24.2 | Test Improvments |  | 2d | 2017-11-17 | 2017-11-18 | 39 |  |  | Xu Hai [50%] |
| 41 | 24.3 | Update SW Documentation |  | 2d | 2017-11-17 | 2017-11-18 | 39 |  |  | Alex Hale [50%]; Justin Tremblay; Josh Inscoe |
| 42 | 24.4 | Update Testing Documentation |  | 1d | 2017-11-19 | 2017-11-19 | 40 |  |  | Alex Hale; Xu Hai |
| 43 | 25 | Development of Checklist |  | 2d | 2017-11-14 | 2017-11-15 | 37 |  |  | Alex Hale [10%]; Justin Tremblay [50%]; Frederic Cyr [50%]; Josh Inscoe [50%] |
| 44 | 26 | Phase 1 integration testing |  | 1d | 2017-11-14 | 2017-11-14 | 37 |  |  | Alex Hale [20%]; Justin Tremblay [67%]; Frederic Cyr [10%]; Xu Hai; Xianyi Zhan [50%]; Josh Inscoe [67%] |
| 45 | 27 | Fourth Design Meeting | milestone | 0d | 2017-11-07 | 2017-11-07 | 20 |  | start no earlier than 2017-11-07 |  |
| 46 | 28 | Phase 1 poster design |  | 3d | 2017-11-14 | 2017-11-16 | 15, 37 |  |  | Alex Hale [33%]; Frederic Cyr [33%]; Xianyi Zhan [33%] |
| 47 | 29 | **Final Integation Testing** |  | 3d | 2017-11-15 | 2017-11-17 | 44 |  |  |  |
| 48 | 29.1 | **Hardware Testing** |  | 1d | 2017-11-15 | 2017-11-15 |  |  |  |  |
| 49 | 29.1.1 | Stability and Zipline-Crossing Tests |  | 1d | 2017-11-15 | 2017-11-15 |  |  |  | Frederic Cyr; Xu Hai [33%]; Xianyi Zhan |
| 50 | 29.2 | **Software Testing** |  | 3d | 2017-11-15 | 2017-11-17 |  |  |  |  |
| 51 | 29.2.1 | Position and Orientation Tests |  | 3d | 2017-11-15 | 2017-11-17 |  |  |  | Alex Hale [10%]; Justin Tremblay [10%]; Xu Hai [25%]; Josh Inscoe [10%] |
| 52 | 29.2.2 | Block Avoidance Tests |  | 3d | 2017-11-15 | 2017-11-17 |  |  |  | Alex Hale [10%]; Justin Tremblay [10%]; Xu Hai [25%]; Josh Inscoe [10%] |
| 53 | 29.2.3 | Searching Tests |  | 3d | 2017-11-15 | 2017-11-17 |  |  |  | Alex Hale [10%]; Justin Tremblay [10%]; Xu Hai [25%]; Josh Inscoe [10%] |
| 54 | 29.2.4 | UI Tests |  | 3d | 2017-11-15 | 2017-11-17 |  |  |  | Alex Hale [10%]; Justin Tremblay [10%]; Xu Hai [25%]; Josh Inscoe [10%] |
| 55 | 30 | Final Poster Design and Print |  | 1d | 2017-11-17 | 2017-11-17 | 46 |  |  | Alex Hale [67%]; Frederic Cyr; Xianyi Zhan |
| 56 | 31 | Final Demo | milestone | 0d | 2017-11-24 | 2017-11-24 | 47, 55 |  | start no earlier than 2017-11-24 |  |
| 57 | 32 | Final document preparation for submission |  | 3d | 2017-11-24 | 2017-11-26 | 1, 56 |  |  | Alex Hale; Frederic Cyr; Xianyi Zhan |
| 58 | 33 | Final Class | milestone | 0d | 2017-12-01 | 2017-12-01 | 57 |  | start no earlier than 2017-12-01 |  |
